# Project Plan

Schedule from MS Project, 2023-03-08 to 2023-06-16, costs in £, A marks actual dates.

## Calendars

- Standard: Mon-Fri 08:00-12:00, 13:00-17:00; Sat-Sun off.

## Resources

| Resource | Group | Unit | Rate | Cost per use |
| --- | --- | --- | --- | --- |
| Microsoft Windows 10 computer | All | Operating System |  |  |
| Unity Hub | Implementation | Software |  |  |
| Unity | Implementation | Software |  |  |
| Audacity | Design | Software |  |  |
| Microsoft word | Design | Software |  |  |
| Microsoft Project | Planning | Software |  |  |
| Github Desktop | All | Version control |  |  |
| Google Chrome | All | Web Browser |  |  |
| Studio Microphone | Asset creation | Hardware |  |  |
| Jaye Bell | Total work | Personnel | 69.81 | 8502.36 |
| Total estimated personnel cost | Cost | Personnel |  |  |
| Testers | Testing |  |  |  |

## Schedule

| ID | WBS | Task | Type | Duration | Start | Finish | Predecessors | Complete | Remaining | Actual start | Total slack | Free slack | Constraint | Resources | Work | Actual work | Cost | Actual cost | Text1 |
| --- | --- | --- | --- | --- | --- | --- | --- | --- | --- | --- | --- | --- | --- | --- | --- | --- | --- | --- | --- |
| 1 | 1 | **Planning Stage** |  | 5d | 2023-03-08 A | 2023-03-14 A |  | 100% |  |  |  |  |  |  | 24h | 24h | 27,182.52 | 27,182.52 |  |
| 2 | 1.1 | Write project proposal |  | 1d | 2023-03-08 A | 2023-03-08 A |  | 100% |  |  |  |  |  | Google Chrome [1 Web Browser]; Jaye Bell [1 Personnel]; Microsoft Windows 10 computer [1 Operating System]; Microsoft word [1 Software] | 8h | 8h | 9,060.84 | 9,060.84 |  |
| 3 | 1.2 | Write project requirements |  | 1d | 2023-03-09 A | 2023-03-09 A | 2 | 100% |  |  |  |  |  | Google Chrome [1 Web Browser]; Jaye Bell [1 Personnel]; Microsoft Windows 10 computer [1 Operating System]; Microsoft word [1 Software] | 8h | 8h | 9,060.84 | 9,060.84 |  |
| 4 | 1.3 | Write project plan |  | 1d | 2023-03-10 A | 2023-03-10 A | 3 | 100% |  |  |  |  |  | Google Chrome [1 Web Browser]; Jaye Bell [1 Personnel]; Microsoft Project [1 Software]; Microsoft Windows 10 computer [1 Operating System] | 8h | 8h | 9,060.84 | 9,060.84 |  |
| 5 | 1.4 | **Milestones** |  | 0d | 2023-03-14 A | 2023-03-14 A |  | 100% |  |  |  |  |  |  |  |  |  |  |  |
| 6 | 1.4.1 | Submit project proposal | milestone | 0d | 2023-03-14 A | 2023-03-14 A |  | 100% |  |  |  |  |  |  |  |  |  |  |  |
| 7 | 1.4.2 | Submit project requirements | milestone | 0d | 2023-03-14 A | 2023-03-14 A |  | 100% |  |  |  |  |  |  |  |  |  |  |  |
| 8 | 1.4.3 | Submit project plan | milestone | 0d | 2023-03-14 A | 2023-03-14 A |  | 100% |  |  |  |  |  |  |  |  |  |  |  |
| 9 | 2 | **Development stage** |  | 57d? | 2023-03-15 A | 2023-06-01 | 1 | 58% | 23.82d? |  |  |  |  |  | 232h | 131.11h | 92,717.16 | 60,167.18 |  |
| 10 | 2.1 | **Design portion** |  | 13d | 2023-03-15 A | 2023-03-31 A |  | 100% |  |  |  |  |  |  | 8h | 8h | 17,563.2 | 17,563.2 |  |
| 11 | 2.1.1 | Write up GDD |  | 0.5d | 2023-03-15 A | 2023-03-15 A |  | 100% |  |  |  |  |  | Google Chrome [1 Web Browser]; Jaye Bell [1 Personnel]; Microsoft Windows 10 computer [1 Operating System]; Microsoft word [1 Software] | 4h | 4h | 8,781.6 | 8,781.6 |  |
| 12 | 2.1.2 | Write up testing plan |  | 0.5d | 2023-03-15 A | 2023-03-15 A | 11 | 100% |  |  |  |  |  | Google Chrome [1 Web Browser]; Jaye Bell [1 Personnel]; Microsoft Windows 10 computer [1 Operating System]; Microsoft word [1 Software] | 4h | 4h | 8,781.6 | 8,781.6 |  |
| 13 | 2.1.3 | **Milestones** |  | 0d | 2023-03-31 A | 2023-03-31 A |  | 100% |  |  |  |  |  |  |  |  |  |  |  |
| 14 | 2.1.3.1 | Submit GDD | milestone | 0d | 2023-03-31 A | 2023-03-31 A |  | 100% |  |  |  |  | finish no earlier than 2023-03-31 |  |  |  |  |  |  |
| 15 | 2.1.3.2 | Submit testing plan | milestone | 0d | 2023-03-31 A | 2023-03-31 A | 14 | 100% |  |  |  |  | finish no earlier than 2023-03-31 |  |  |  |  |  |  |
| 16 | 2.2 | **Implementation portion** |  | 32d | 2023-04-19 | 2023-06-01 |  | 58% | 13.56d | 2023-04-20 |  |  |  |  | 224h | 123.11h | 75,153.96 | 42,603.98 |  |
| 17 | 2.2.1 | **Art** |  | 5d | 2023-04-27 A | 2023-05-03 A |  | 100% |  |  |  |  |  | Github Desktop [1 Version control]; Google Chrome [1 Web Browser]; Jaye Bell [1 Personnel]; Microsoft Windows 10 computer [1 Operating System] | 40h | 40h | 11,294.76 | 11,294.76 |  |
| 18 | 2.2.1.1 | Player art |  | 1d | 2023-04-27 A | 2023-04-27 A |  | 100% |  |  |  |  | start no earlier than 2023-04-27 |  |  |  |  |  |  |
| 19 | 2.2.1.2 | Background art |  | 1d | 2023-04-28 A | 2023-04-28 A | 18 | 100% |  |  |  |  |  |  |  |  |  |  |  |
| 20 | 2.2.1.3 | Geometry art |  | 1d | 2023-05-01 A | 2023-05-01 A | 19 | 100% |  |  |  |  |  |  |  |  |  |  |  |
| 21 | 2.2.1.4 | Obstacle art |  | 1d | 2023-05-02 A | 2023-05-02 A | 20 | 100% |  |  |  |  |  |  |  |  |  |  |  |
| 22 | 2.2.1.5 | UI art |  | 1d | 2023-05-03 A | 2023-05-03 A | 21 | 100% |  |  |  |  |  |  |  |  |  |  |  |
| 23 | 2.2.1.6 | Upload all art to version control | milestone | 0d | 2023-05-03 A | 2023-05-03 A | 22 | 100% |  |  |  |  |  |  |  |  |  |  |  |
| 24 | 2.2.2 | **Animation** |  | 4.5d | 2023-05-04 | 2023-05-10 | 17 |  |  |  | 26.5d |  |  | Github Desktop [1 Version control]; Google Chrome [1 Web Browser]; Jaye Bell [1 Personnel]; Microsoft Windows 10 computer [1 Operating System] | 36h |  | 11,015.52 |  | Animation didn't make it into the first build of the game |
| 25 | 2.2.2.1 | Player animation |  | 0.5d | 2023-05-04 | 2023-05-04 |  |  |  |  | 26.5d | 0d |  |  |  |  |  |  |  |
| 26 | 2.2.2.2 | Background animation |  | 1d | 2023-05-04 | 2023-05-05 | 25 |  |  |  | 26.5d | 0d |  |  |  |  |  |  |  |
| 27 | 2.2.2.3 | Geometry animation |  | 1d | 2023-05-05 | 2023-05-08 | 26 |  |  |  | 26.5d | 0d |  |  |  |  |  |  |  |
| 28 | 2.2.2.4 | Obstacle animation |  | 1d | 2023-05-08 | 2023-05-09 | 27 |  |  |  | 26.5d | 0d |  |  |  |  |  |  |  |
| 29 | 2.2.2.5 | UI animation |  | 1d | 2023-05-09 | 2023-05-10 | 28 |  |  |  | 26.5d | 0d |  |  |  |  |  |  |  |
| 30 | 2.2.2.6 | Upload all animation to version control | milestone | 0d | 2023-05-10 | 2023-05-10 | 29 |  |  |  | 26.5d |  |  |  |  |  |  |  |  |

| ID | WBS | Task | Type | Duration | Start | Finish | Predecessors | Complete | Remaining | Actual start | Total slack | Free slack | Constraint | Resources | Work | Actual work | Cost | Actual cost |
| --- | --- | --- | --- | --- | --- | --- | --- | --- | --- | --- | --- | --- | --- | --- | --- | --- | --- | --- |
| 31 | 2.2.3 | **Music** |  | 0.5d | 2023-05-10 A | 2023-05-10 A | 24 | 100% |  |  |  |  |  | Audacity [1 Software]; Github Desktop [1 Version control]; Google Chrome [1 Web Browser]; Jaye Bell [1 Personnel]; Microsoft Windows 10 computer [1 Operating System]; Studio Microphone [1 Hardware] | 4h | 4h | 8,781.6 | 8,781.6 |
| 32 | 2.2.3.1 | Base theme |  | 0.5d | 2023-05-10 A | 2023-05-10 A |  | 100% |  |  |  |  |  |  |  |  |  |  |
| 33 | 2.2.3.2 | Upload all music to version control | milestone | 0d | 2023-05-10 A | 2023-05-10 A |  | 100% |  |  |  |  |  |  |  |  |  |  |
| 34 | 2.2.4 | **Sound** |  | 4d | 2023-05-11 | 2023-05-16 | 31 |  |  |  | 22d |  |  |  |  |  |  |  |
| 35 | 2.2.4.1 | Player sounds |  | 1d | 2023-05-11 | 2023-05-11 |  |  |  |  | 22d | 0d |  |  |  |  |  |  |
| 36 | 2.2.4.2 | Background sounds |  | 1d | 2023-05-12 | 2023-05-12 | 35 |  |  |  | 22d | 0d |  |  |  |  |  |  |
| 37 | 2.2.4.3 | Obstacle sounds |  | 1d | 2023-05-15 | 2023-05-15 | 36 |  |  |  | 22d | 0d |  |  |  |  |  |  |
| 38 | 2.2.4.4 | UI sounds |  | 1d | 2023-05-16 | 2023-05-16 | 37 |  |  |  | 22d | 0d |  |  |  |  |  |  |
| 39 | 2.2.4.5 | Upload all sounds to version control | milestone | 0d | 2023-05-16 | 2023-05-16 | 38 |  |  |  | 22d |  |  |  |  |  |  |  |
| 40 | 2.2.5 | **Level Building** |  | 2d | 2023-05-17 A | 2023-05-18 A | 34 | 100% |  |  |  |  |  | Github Desktop [1 Version control]; Google Chrome [1 Web Browser]; Jaye Bell [1 Personnel]; Microsoft Windows 10 computer [1 Operating System]; Unity [1 Software]; Unity Hub [1 Software] | 16h | 16h | 9,619.32 | 9,619.32 |
| 41 | 2.2.5.1 | Create the level layouts in the engine |  | 1d | 2023-05-17 A | 2023-05-17 A |  | 100% |  |  |  |  |  |  |  |  |  |  |
| 42 | 2.2.5.2 | Edit the level layouts with new information |  | 1d | 2023-05-18 A | 2023-05-18 A | 41 | 100% |  |  |  |  |  |  |  |  |  |  |
| 43 | 2.2.5.3 | Upload all level changes to version control | milestone | 0d | 2023-05-18 A | 2023-05-18 A | 42 | 100% |  |  |  |  |  |  |  |  |  |  |
| 44 | 2.2.6 | **Coding** |  | 31d | 2023-04-20 A | 2023-06-01 | 40 | 62% | 11.84d |  |  |  |  | Google Chrome [1 Web Browser]; Microsoft Windows 10 computer [1 Operating System]; Unity [1 Software]; Unity Hub [1 Software]; Github Desktop [1 Version control]; Jaye Bell [1 Personnel] | 128h | 63.11h | 17,438.04 | 12,908.3 |
| 45 | 2.2.6.1 | **Player** |  | 5d | 2023-04-20 A | 2023-04-26 A |  | 100% |  |  |  |  |  |  |  |  |  |  |
| 46 | 2.2.6.1.1 | Movement | milestone | 0d | 2023-04-20 A | 2023-04-20 A |  | 100% |  |  |  |  |  |  |  |  |  |  |
| 47 | 2.2.6.1.2 | Jumping |  | 5d | 2023-04-20 A | 2023-04-26 A |  | 100% |  |  |  |  |  |  |  |  |  |  |
| 48 | 2.2.6.2 | **Background** |  | 5d | 2023-04-27 A | 2023-05-03 A | 45 | 100% |  |  |  |  |  |  |  |  |  |  |
| 49 | 2.2.6.2.1 | Interact with level |  | 5d | 2023-04-27 A | 2023-05-03 A |  | 100% |  |  |  |  |  |  |  |  |  |  |
| 50 | 2.2.6.3 | **Obstacles** |  | 5d | 2023-05-03 | 2023-05-09 A | 48 | 100% |  | 2023-04-20 |  |  |  |  |  |  |  |  |
| 51 | 2.2.6.3.1 | Interact with level geometry |  | 5d | 2023-05-03 A | 2023-05-09 A |  | 100% |  |  |  |  | finish no earlier than 2023-05-09 |  |  |  |  |  |
| 52 | 2.2.6.3.2 | Interact with player objects |  | 5d | 2023-04-20 A | 2023-04-26 A |  | 100% |  |  |  |  |  |  |  |  |  |  |
| 53 | 2.2.6.4 | **UI** |  | 7d | 2023-05-10 A | 2023-05-18 | 50 | 50% | 3.5d |  | 2d | 0d |  |  |  |  |  |  |
| 54 | 2.2.6.4.1 | Update current height |  | 7d | 2023-05-10 A | 2023-05-18 A |  | 100% |  |  |  |  |  |  |  |  |  |  |
| 55 | 2.2.6.4.2 | Display height |  | 7d | 2023-05-10 A | 2023-05-18 A |  | 100% |  |  |  |  |  |  |  |  |  |  |
| 56 | 2.2.6.4.3 | Display lives |  | 7d | 2023-05-10 | 2023-05-18 |  |  |  |  | 2d |  |  |  |  |  |  |  |
| 57 | 2.2.6.4.4 | Display current upgrades |  | 7d | 2023-05-10 | 2023-05-18 |  |  |  |  | 2d |  |  |  |  |  |  |  |

Notes:
- 34: Text1: Sounds other than music didn't make it into the first build of the game
- 56: Text1: Lives didn't make it into the first build of the game
- 57: Text1: Upgrades didn't make it into the first build of the game

| ID | WBS | Task | Type | Duration | Start | Finish | Predecessors | Complete | Remaining | Total slack | Constraint | Resources | Work | Cost |
| --- | --- | --- | --- | --- | --- | --- | --- | --- | --- | --- | --- | --- | --- | --- |
| 58 | 2.2.6.5 | **Mechanics** |  | 7d | 2023-05-19 | 2023-05-29 | 53 |  |  | 2d |  |  |  |  |
| 59 | 2.2.6.5.1 | Upgrade application |  | 7d | 2023-05-19 | 2023-05-29 |  |  |  | 2d |  |  |  |  |
| 60 | 2.2.6.6 | **Milestones** |  | 0d | 2023-06-01 A | 2023-06-01 | 58 |  | 0d | 0d |  |  |  |  |
| 61 | 2.2.6.6.1 | Upload all code to version control | milestone, manual | 0d | 2023-06-01 A | 2023-06-01 |  | 70% | 0d |  |  |  |  |  |
| 62 | 2.2.7 | **Testing** |  | 0d | 2023-06-01 | 2023-06-01 | 44 |  |  |  |  | Github Desktop; Google Chrome; Jaye Bell [1 Personnel]; Microsoft Windows 10 computer; Testers |  | 8,502.36 |
| 63 | 2.2.7.1 | Test game based on plan |  | 1d | 2023-06-01 | 2023-06-01 |  |  |  | 0d | finish no earlier than 2023-06-01 |  |  |  |
| 64 | 2.2.7.2 | Record test results | milestone | 0d | 2023-06-01 | 2023-06-01 | 63 |  |  | 0d |  |  |  |  |
| 65 | 2.2.8 | **Ending Milestones** |  | 0d | 2023-06-01 A | 2023-06-01 | 62 |  | 0d | 10d |  | Github Desktop; Google Chrome; Jaye Bell [1 Personnel]; Microsoft Windows 10 computer; Total estimated personnel cost |  | 8,502.36 |
| 66 | 2.2.8.1 | Submit Game | milestone | 0d | 2023-06-01 A | 2023-06-01 A |  | 100% |  |  |  |  |  |  |
| 67 | 2.2.8.2 | Submit testing results | milestone | 0d | 2023-06-01 | 2023-06-01 |  |  |  | 10d |  |  |  |  |
| 68 | 3 | **Evaluation stage** |  | 11d | 2023-06-02 | 2023-06-16 | 9 |  |  | 0d |  |  | 8h | 9,060.84 |
| 69 | 3.1 | Write up evaluation document |  | 1d | 2023-06-02 | 2023-06-02 |  |  |  | 10d |  | Google Chrome [1 Web Browser]; Jaye Bell [1 Personnel]; Microsoft Windows 10 computer [1 Operating System]; Microsoft word [1 Software] | 8h | 9,060.84 |
| 70 | 3.2 | **Milestones** |  | 0d | 2023-06-16 | 2023-06-16 |  |  |  | 0d |  |  |  |  |
| 71 | 3.2.1 | Submit evaluation document | milestone, manual | 0d | 2023-06-16 | 2023-06-16 | 69 |  |  |  |  |  |  |  |

Notes:
- 59: Text1: Upgrades didn't make it into the first build of the game
- 61: Text1: All possible code is in version control, other features will be added in a later version
- 62: Text1: Testing is still to be done.
- 63: Text1: Testing is still to be done.
- 64: Text1: Testing is still to be done.
- 67: Text1: Testing is still to be done.
- 68: Text1: Evaluation is still to be done.
- 69: Text1: Evaluation is still to be done.
- 70: Text1: Evaluation is still to be done.
- 71: Text1: Evaluation is still to be done.
